# 预算管理系统项目计划（集团和人寿需求）

Schedule from MS Project, 2012-10-08 to 2012-12-31, status date 2011-08-01, A marks actual dates.

## Calendars

- 标准: Mon-Fri 08:00-12:00, 13:00-17:00; Sat-Sun off.

## Resources

| Resource |
| --- |
| 业务组 |
| 王建利 |
| 吴志宾 |
| 彭伟 |
| 王飞 |
| 周鑫 |
| 用户 |
| 贾单单 |
| 开发人员 |
| 钟贵鑫 |
| 周艾强 |

## Schedule

| ID | WBS | Task | Duration | Start | Finish | Predecessors | Complete | Constraint | Resources | Work | Actual work |
| --- | --- | --- | --- | --- | --- | --- | --- | --- | --- | --- | --- |
| 1 | 1 | **项目准备阶段** | 12d | 2012-10-08 A | 2012-10-23 A |  | 100% |  |  | 224h | 224h |
| 2 | 1.1 | 需求分析 | 8d | 2012-10-08 A | 2012-10-17 A |  | 100% | start no earlier than 2012-10-08 | 吴志宾; 贾单单 | 128h | 128h |
| 3 | 1.2 | 开发人员需求分析 | 4d | 2012-10-18 A | 2012-10-23 A | 2 | 100% |  | 王飞; 周鑫; 彭伟 | 96h | 96h |
| 4 | 2 | **项目启动阶段** | 0.5d | 2012-10-18 A | 2012-10-18 A |  | 100% |  |  | 8h | 8h |
| 5 | 2.1 | 需求评审 | 0.5d | 2012-10-18 A | 2012-10-18 A | 2 | 100% |  | 用户; 吴志宾 | 8h | 8h |
| 6 | 3 | **项目实施阶段** | 53d | 2012-10-18 A | 2012-12-31 A |  | 100% |  |  | 1988h | 1988h |
| 7 | 3.1 | **设计及单元测试阶段** | 22.5d | 2012-10-18 A | 2012-11-19 A | 5 | 100% |  |  | 180h | 180h |
| 8 | 3.1.1 | **数据库设计** | 2d | 2012-10-18 A | 2012-10-22 A |  | 100% |  |  | 16h | 16h |
| 9 | 3.1.1.1 | 数据库设计 | 2d | 2012-10-18 A | 2012-10-22 A |  | 100% | finish no earlier than 2011-06-08 | 吴志宾 | 16h | 16h |
| 10 | 3.1.2 | **概要设计** | 6d | 2012-10-22 A | 2012-10-30 A |  | 100% |  |  | 48h | 48h |
| 11 | 3.1.2.1 | 一期功能 | 6d | 2012-10-22 A | 2012-10-30 A | 9 | 100% |  | 吴志宾 | 48h | 48h |
| 12 | 3.1.3 | **详细设计** | 6d | 2012-10-30 A | 2012-11-07 A |  | 100% |  |  | 48h | 48h |
| 13 | 3.1.3.1 | 一期功能 | 6d | 2012-10-30 A | 2012-11-07 A | 11 | 100% |  | 吴志宾 | 48h | 48h |
| 14 | 3.1.4 | **设计评审** | 0.5d | 2012-11-07 A | 2012-11-07 A |  | 100% |  |  | 4h | 4h |
| 15 | 3.1.4.1 | 一期功能 | 0.5d | 2012-11-07 A | 2012-11-07 A | 13 | 100% |  | 吴志宾 | 4h | 4h |
| 16 | 3.1.5 | 单元测试及代码复查和管理 | 8d | 2012-11-08 A | 2012-11-19 A | 14 | 100% |  | 吴志宾 | 64h | 64h |
| 17 | 3.2 | **二期维护工作** | 53d | 2012-10-18 A | 2012-12-31 A |  | 100% |  |  | 672h | 672h |
| 18 | 3.2.1 | 用户测试BUG与内测试BUG的修改 | 6d | 2012-10-24 A | 2012-10-31 A | 3 | 100% |  | 彭伟 | 48h | 48h |
| 19 | 3.2.2 | 关键代码的优化 | 3d | 2012-11-01 A | 2012-11-05 A | 18 | 100% |  | 彭伟 | 24h | 24h |
| 20 | 3.2.3 | 与资源配置管理平台接口 | 3d | 2012-11-06 A | 2012-11-08 A | 19 | 100% |  | 彭伟 | 24h | 24h |
| 21 | 3.2.4 | 系统垃圾代码排查与修改 | 7d | 2012-11-09 A | 2012-11-19 A | 20 | 100% |  | 彭伟 | 56h | 56h |
| 22 | 3.2.5 | 会话超时处理 | 4d | 2012-12-24 A | 2012-12-27 A | 65 | 100% |  | 彭伟 | 32h | 32h |
| 23 | 3.2.6 | 各模块综合测试 | 8d | 2012-10-18 A | 2012-10-29 A | 2 | 100% |  | 贾单单 | 64h | 64h |
| 24 | 3.2.7 | 各模块核心功能的测试 | 3d | 2012-10-30 A | 2012-11-01 A | 23 | 100% |  | 贾单单 | 24h | 24h |
| 25 | 3.2.8 | 需求规格说明书的补充和完善 | 7d | 2012-11-02 A | 2012-11-12 A | 24 | 100% |  | 贾单单 | 56h | 56h |
| 26 | 3.2.9 | 概要设计文档的优化 | 5d | 2012-11-20 A | 2012-11-26 A | 16 | 100% |  | 吴志宾 | 40h | 40h |
| 27 | 3.2.10 | 详细文档的优化 | 5d | 2012-11-27 A | 2012-12-03 A | 26 | 100% |  | 吴志宾 | 40h | 40h |
| 28 | 3.2.11 | 测试文档的优化 | 5d | 2012-11-13 A | 2012-11-19 A | 25 | 100% |  | 贾单单 | 40h | 40h |
| 29 | 3.2.12 | 代码质量检查与调优 | 10d | 2012-12-04 A | 2012-12-17 A | 27 | 100% |  | 吴志宾 | 80h | 80h |
| 30 | 3.2.13 | 用户密码定时修改功能 | 2d | 2012-12-28 A | 2012-12-31 A | 22 | 100% |  | 彭伟 | 16h | 16h |
| 31 | 3.2.14 | 各模块报表调整 | 10d | 2012-12-18 A | 2012-12-31 A | 29 | 100% |  | 吴志宾 | 80h | 80h |
| 32 | 3.2.15 | 用户使用情况的跟踪和维护与修改 | 4d | 2012-12-24 A | 2012-12-27 A | 66 | 100% |  | 贾单单 | 32h | 32h |
| 33 | 3.2.16 | Q&A的整理 | 2d | 2012-12-28 A | 2012-12-31 A | 32 | 100% |  | 贾单单 | 16h | 16h |

| ID | WBS | Task | Type | Duration | Start | Finish | Predecessors | Complete | Constraint | Resources | Work | Actual work |
| --- | --- | --- | --- | --- | --- | --- | --- | --- | --- | --- | --- | --- |
| 34 | 3.3 | **分公司预算模块** |  | 19d | 2012-10-24 A | 2012-11-19 A |  | 100% |  |  | 304h | 304h |
| 35 | 3.3.1 | 基础数据成本中心多级结构修改 |  | 2d | 2012-10-24 A | 2012-10-25 A | 3 | 100% | start no earlier than 2011-06-27 | 周鑫 | 16h | 16h |
| 36 | 3.3.2 | 帐套表，管控表权限控制 |  | 3d | 2012-10-26 A | 2012-10-30 A | 35 | 100% |  | 周鑫 | 24h | 24h |
| 37 | 3.3.3 | 成本中心多级选择及显示权限控制 |  | 2d | 2012-10-31 A | 2012-11-01 A | 36 | 100% |  | 周鑫 | 16h | 16h |
| 38 | 3.3.4 | 管控单位多级选择及显示权限控制 |  | 2d | 2012-11-02 A | 2012-11-05 A | 37 | 100% |  | 周鑫 | 16h | 16h |
| 39 | 3.3.5 | 帐套表，管控表预算金额统计及多级成本中心显示 |  | 2d | 2012-11-06 A | 2012-11-07 A | 38 | 100% |  | 周鑫 | 16h | 16h |
| 40 | 3.3.6 | 预算编制及调整时，日常性，项目性预算的多级数据显示控制 |  | 3d | 2012-11-08 A | 2012-11-12 A | 39 | 100% |  | 周鑫 | 24h | 24h |
| 41 | 3.3.7 | 预算编制及调整时的分公司审批及预算金额控制 |  | 3d | 2012-11-13 A | 2012-11-15 A | 40 | 100% |  | 周鑫 | 24h | 24h |
| 42 | 3.3.8 | 预算执行金额统计及多级成本中心显示 |  | 2d | 2012-11-16 A | 2012-11-19 A | 41 | 100% |  | 周鑫 | 16h | 16h |
| 43 | 3.3.9 | 合同中金额统计及多级成本中心显示 |  | 2d | 2012-10-24 A | 2012-10-25 A | 3 | 100% |  | 王飞 | 16h | 16h |
| 44 | 3.3.10 | 预算执行时，日常性，项目性预算的多级数据显示控制 |  | 3d | 2012-10-26 A | 2012-10-30 A | 43 | 100% |  | 王飞 | 24h | 24h |
| 45 | 3.3.11 | 预算执行时的分公司审批及执行金额控制 |  | 3d | 2012-10-31 A | 2012-11-02 A | 44 | 100% |  | 王飞 | 24h | 24h |
| 46 | 3.3.12 | 报表中成本中心及管控单位多级成本中心的统计 |  | 3d | 2012-11-05 A | 2012-11-07 A | 45 | 100% |  | 王飞 | 24h | 24h |
| 47 | 3.3.13 | 查询时成本中心及管控单位的多级成本中心显示 |  | 3d | 2012-11-08 A | 2012-11-12 A | 46 | 100% |  | 王飞 | 24h | 24h |
| 48 | 3.3.14 | 帐套初始化时的存储过程修改 |  | 3d | 2012-11-13 A | 2012-11-15 A | 47 | 100% |  | 王飞 | 24h | 24h |
| 49 | 3.3.15 | IT资产信息，滚动规划时的多级成本中心数据统计 |  | 2d | 2012-11-16 A | 2012-11-19 A | 48 | 100% |  | 王飞 | 16h | 16h |
| 50 | 3.4 | **测试阶段** |  | 24d | 2012-11-20 A | 2012-12-21 A |  | 100% |  |  | 832h | 832h |
| 51 | 3.4.1 | 测试方案及测试用例编写 |  | 3d | 2012-11-20 A | 2012-11-22 A | 28 | 100% |  | 贾单单 | 24h | 24h |
| 52 | 3.4.2 | 测试用例评审 |  | 1d | 2012-11-23 A | 2012-11-23 A | 51 | 100% |  | 贾单单 | 8h | 8h |
| 53 | 3.4.3 | 第一轮综合测试 |  | 4d | 2012-11-26 A | 2012-11-29 A | 52 | 100% |  | 贾单单 | 32h | 32h |
| 54 | 3.4.4 | 单元测试 |  | 5d | 2012-11-20 A | 2012-11-26 A | 34 | 100% |  | 周鑫; 王飞; 彭伟 | 120h | 120h |
| 55 | 3.4.5 | 第一轮修改BUG |  | 5d | 2012-11-27 A | 2012-12-03 A | 54 | 100% |  | 周鑫; 王飞; 彭伟 | 120h | 120h |
| 56 | 3.4.6 | 第一轮回归测试 |  | 3d | 2012-11-30 A | 2012-12-04 A | 53 | 100% |  | 贾单单 | 24h | 24h |
| 57 | 3.4.7 | 第二轮综合测试 |  | 3d | 2012-12-05 A | 2012-12-07 A | 56 | 100% |  | 贾单单 | 24h | 24h |
| 58 | 3.4.8 | 单元测试 |  | 4d | 2012-12-04 A | 2012-12-07 A | 55 | 100% |  | 周鑫; 王飞; 彭伟 | 96h | 96h |
| 59 | 3.4.9 | 第二轮修改BUG |  | 4d | 2012-12-10 A | 2012-12-13 A | 58 | 100% |  | 周鑫; 王飞; 彭伟 | 96h | 96h |
| 60 | 3.4.10 | 第二轮回归测试 | milestone | 2d | 2012-12-10 A | 2012-12-11 A | 57 | 100% |  | 贾单单 | 16h | 16h |
| 61 | 3.4.11 | 用户第一轮测试 |  | 3d | 2012-12-12 A | 2012-12-14 A | 60 | 100% |  | 贾单单; 用户 | 48h | 48h |
| 62 | 3.4.12 | 用户第一轮修改BUG |  | 2d | 2012-12-14 A | 2012-12-17 A | 59 | 100% |  | 周鑫; 王飞; 彭伟 | 48h | 48h |
| 63 | 3.4.13 | 用户第一轮回归测试 |  | 3d | 2012-12-17 A | 2012-12-19 A | 61 | 100% |  | 贾单单; 用户 | 48h | 48h |
| 64 | 3.4.14 | 用户第二轮测试 |  | 2d | 2012-12-18 A | 2012-12-19 A | 62 | 100% |  | 周鑫; 王飞; 彭伟 | 48h | 48h |
| 65 | 3.4.15 | 用户第二轮修改BUG |  | 2d | 2012-12-20 A | 2012-12-21 A | 64 | 100% |  | 周鑫; 王飞; 彭伟 | 48h | 48h |
| 66 | 3.4.16 | 用户第二轮回归测试 |  | 2d | 2012-12-20 A | 2012-12-21 A | 63 | 100% |  | 贾单单; 用户 | 32h | 32h |

| ID | WBS | Task | Duration | Start | Finish | Predecessors | Complete | Resources | Work | Actual work |
| --- | --- | --- | --- | --- | --- | --- | --- | --- | --- | --- |
| 67 | 4 | **项目收尾阶段** | 6d | 2012-12-24 A | 2012-12-31 A | 50 | 100% |  | 96h | 96h |
| 68 | 4.1 | 系统试上线 | 1d | 2012-12-24 A | 2012-12-24 A | 65 | 100% | 周鑫; 王飞 | 16h | 16h |
| 69 | 4.2 | 系统验收 | 2d | 2012-12-25 A | 2012-12-26 A | 68 | 100% | 周鑫; 王飞 | 32h | 32h |
| 70 | 4.3 | 系统后期维护 | 3d | 2012-12-27 A | 2012-12-31 A | 69 | 100% | 周鑫; 王飞 | 48h | 48h |
